# Projekt PI

Schedule from MS Project, 2014-03-14 to 2014-05-28, costs in kn.
Tiskara.NET

## Calendars

- Standard: Mon-Sat 09:00-19:00; Sun off. Exceptions (off unless hours are given): 2014-05-01 (Prvi maj).

## Resources

| Resource | Rate |
| --- | --- |
| Tomislav Hop | 60 |
| Dražen Hrgar | 50 |
| Ivan Hontić |  |
| Andrija Bartolić | 50 |
| Dominik-Dino Pavleković | 50 |
| Laptop 1 | 10 |
| Laptop 2 | 10 |
| Laptop 3 | 10 |
| Računalo | 12 |
| Tablet | 3 |

## Schedule

| ID | WBS | Task | Type | Duration | Start | Finish | Predecessors | Total slack | Free slack | Constraint | Resources | Work | Cost |
| --- | --- | --- | --- | --- | --- | --- | --- | --- | --- | --- | --- | --- | --- |
| 1 | 1 | Tiskara |  | 1d? | 2014-03-14 09:00 | 2014-03-14 17:00 |  | 78.25d |  | start no earlier than 2014-03-14 08:00 |  |  |  |
| 2 | 2 | **POČETAK PROJEKTA** |  | 79.25d | 2014-03-14 09:00 | 2014-05-28 13:00 |  | 0d |  |  |  | 1117h | 46,308 |
| 3 | 2.1 | **KREIRANJE DOKUMENTACIJE ZA PRIJAVU PROJEKTA** |  | 0.56d | 2014-03-14 09:00 | 2014-03-14 13:30 |  | 78.69d | 0d |  | Andrija Bartolić; Dominik-Dino Pavleković; Dražen Hrgar; Ivan Hontić; Tomislav Hop; Računalo; Laptop 1 | 33h | 1,422 |
| 4 | 2.1.1 | Odabir projekta |  | 2h | 2014-03-14 09:00 | 2014-03-14 11:00 |  | 78.69d | 0d |  | Andrija Bartolić; Dominik-Dino Pavleković; Dražen Hrgar; Ivan Hontić; Tomislav Hop | 10h | 420 |
| 5 | 2.1.2 | Kreiranje dokumentacije |  | 2h | 2014-03-14 11:00 | 2014-03-14 13:00 | 4 | 78.69d | 0d |  |  |  |  |
| 6 | 2.1.3 | Prijava projekta |  | 30min | 2014-03-14 13:00 | 2014-03-14 13:30 | 5 | 78.69d |  |  | Dražen Hrgar; Laptop 2 | 0.5h | 35 |
| 7 | 2.2 | Završetak kreiranja dokumentacije za prijavu projekta | milestone | 0d | 2014-03-14 13:30 | 2014-03-14 13:30 | 3 | 78.69d |  |  |  |  |  |
| 8 | 2.3 | **PLANIRANJE PROJEKTA** |  | 1.12d | 2014-04-21 09:00 | 2014-04-21 18:00 |  | 33.62d | 0d |  |  | 28h | 1,140 |
| 9 | 2.3.1 | Sastanak tima |  | 3h | 2014-04-21 09:00 | 2014-04-21 12:00 |  | 33.62d | 0d | start no earlier than 2014-04-21 08:00 | Andrija Bartolić; Dominik-Dino Pavleković; Dražen Hrgar; Ivan Hontić; Tomislav Hop | 15h | 630 |
| 10 | 2.3.2 | Utvrđivanje korisničkih zahtjeva |  | 2h | 2014-04-21 12:00 | 2014-04-21 14:00 | 9 | 33.62d | 0d |  | Tomislav Hop; Ivan Hontić; Laptop 1 | 4h | 130 |
| 11 | 2.3.3 | Analiziranje korisničkih zahtjeva |  | 2h | 2014-04-21 14:00 | 2014-04-21 16:00 | 10 | 33.62d | 0d |  | Tomislav Hop; Ivan Hontić; Laptop 1 | 4h | 130 |
| 12 | 2.3.4 | Definiranje uloga u timu |  | 1h | 2014-04-21 16:00 | 2014-04-21 17:00 | 11 | 33.62d | 0d |  | Dražen Hrgar; Laptop 2; Tomislav Hop | 2h | 120 |
| 13 | 2.3.5 | Specifikacija faza projekta |  | 1h | 2014-04-21 17:00 | 2014-04-21 18:00 | 12 | 33.62d |  |  | Tomislav Hop; Ivan Hontić; Dražen Hrgar; Laptop 1; Laptop 2 | 3h | 130 |
| 14 | 2.4 | Završetak planiranja projekta | milestone | 0d | 2014-04-21 18:00 | 2014-04-21 18:00 | 8 | 33.62d | 0d |  |  |  |  |
| 15 | 2.5 | **IZRADA DOKUMENTACIJE** |  | 1d | 2014-04-21 18:00 | 2014-04-22 16:00 |  | 33.62d | 0d |  |  | 27h | 1,322 |
| 16 | 2.5.1 | Sastanak tima |  | 3h | 2014-04-21 18:00 | 2014-04-22 11:00 | 14 | 33.62d | 0d |  | Andrija Bartolić; Dominik-Dino Pavleković; Dražen Hrgar; Ivan Hontić; Tomislav Hop | 15h | 630 |
| 17 | 2.5.2 | Izrada gantograma |  | 2h | 2014-04-22 11:00 | 2014-04-22 13:00 | 16 | 33.62d | 0d |  | Dominik-Dino Pavleković; Tomislav Hop; Laptop 3; Računalo | 4h | 242 |
| 18 | 2.5.3 | Definiranje resursa i budžeta |  | 2h | 2014-04-22 13:00 | 2014-04-22 15:00 | 17 | 33.62d | 0d |  | Tomislav Hop; Dražen Hrgar; Andrija Bartolić; Laptop 2 | 6h | 330 |
| 19 | 2.5.4 | Kreiranje ponude naručitelju |  | 1h | 2014-04-22 15:00 | 2014-04-22 16:00 | 18 | 33.62d |  |  | Tomislav Hop; Dražen Hrgar; Laptop 1 | 2h | 120 |
| 20 | 2.6 | Završetak izrade dokumentacije | milestone | 0d | 2014-04-22 16:00 | 2014-04-22 16:00 | 15 | 33.62d | 0d |  |  |  |  |
| 21 | 2.7 | **MODELIRANJE** |  | 2.88d | 2014-04-22 16:00 | 2014-04-24 19:00 |  | 33.62d | 0d |  |  | 53h | 1,970 |
| 22 | 2.7.1 | Sastanak tima |  | 3h | 2014-04-22 16:00 | 2014-04-22 19:00 | 20 | 33.62d | 0d |  | Andrija Bartolić; Dominik-Dino Pavleković; Dražen Hrgar; Ivan Hontić; Tomislav Hop | 15h | 630 |
| 23 | 2.7.2 | Izrada ERA dijagrama |  | 4h | 2014-04-23 09:00 | 2014-04-23 13:00 | 22 | 33.62d | 0d |  | Andrija Bartolić; Ivan Hontić; Tomislav Hop; Laptop 3 | 12h | 450 |
| 24 | 2.7.3 | Izrada Use Case dijagrama |  | 3h | 2014-04-23 13:00 | 2014-04-23 16:00 | 23 | 33.62d | 0d |  | Tomislav Hop; Laptop 1 | 3h | 190 |
| 25 | 2.7.4 | Izrada Sequence dijagrama |  | 5h | 2014-04-23 16:00 | 2014-04-24 11:00 | 24 | 33.62d | 0d |  | Ivan Hontić; Dražen Hrgar; Laptop 1; Laptop 2 | 10h | 270 |
| 26 | 2.7.5 | Izrada Activity dijagrama |  | 5h | 2014-04-24 11:00 | 2014-04-24 16:00 | 25 | 33.62d | 0d |  | Ivan Hontić; Dražen Hrgar; Laptop 1; Laptop 2 | 10h | 270 |
| 27 | 2.7.6 | Izrada Class dijagrama |  | 3h | 2014-04-24 16:00 | 2014-04-24 19:00 | 26 | 33.62d |  |  | Andrija Bartolić; Laptop 3 | 3h | 160 |
| 28 | 2.8 | Završetak modeliranja | milestone | 0d | 2014-04-24 19:00 | 2014-04-24 19:00 | 21 | 33.62d | 0d |  |  |  |  |
| 29 | 2.9 | Sastanak tima |  | 5h | 2014-04-25 09:00 | 2014-04-25 14:00 | 28 | 33.62d |  |  | Andrija Bartolić; Dominik-Dino Pavleković; Dražen Hrgar; Ivan Hontić; Tomislav Hop | 25h | 1,050 |
| 30 | 2.10 | Izrada početnog kostura aplikacije |  | 5h | 2014-03-14 09:00 | 2014-03-14 14:00 |  | 78.62d |  |  | Andrija Bartolić; Tomislav Hop; Dražen Hrgar | 15h | 800 |

| ID | WBS | Task | Type | Duration | Start | Finish | Predecessors | Total slack | Constraint | Resources | Work | Cost |
| --- | --- | --- | --- | --- | --- | --- | --- | --- | --- | --- | --- | --- |
| 31 | 2.11 | **PROGRAMSKA IMPLEMENTACIJA** |  | 23.62d | 2014-05-05 09:00 | 2014-05-26 18:00 |  | 0d |  |  | 897h | 37,364 |
| 32 | 2.11.1 | Sastanak tima |  | 5h | 2014-05-05 09:00 | 2014-05-05 14:00 |  | 0d | start no earlier than 2014-05-05 08:00 | Andrija Bartolić; Dominik-Dino Pavleković; Dražen Hrgar; Ivan Hontić; Tomislav Hop | 25h | 1,050 |
| 33 | 2.11.2 | Ispuna baze podataka |  | 3d | 2014-05-05 14:00 | 2014-05-07 18:00 | 32 | 0d |  | Andrija Bartolić; Tomislav Hop; Ivan Hontić; Laptop 3; Laptop 1; Računalo | 72h | 2,672 |
| 34 | 2.11.3 | **Izrada programskih modula** |  | 20d | 2014-05-07 18:00 | 2014-05-26 18:00 | 33 | 0d |  | Dražen Hrgar; Ivan Hontić; Andrija Bartolić; Dominik-Dino Pavleković; Tomislav Hop; Laptop 1; Laptop 2; Laptop 3; Računalo | 800h | 33,642 |
| 35 | 2.11.3.1 | Modul za logiranje |  | 2d | 2014-05-07 18:00 | 2014-05-09 14:00 | 33 | 0d |  |  |  |  |
| 36 | 2.11.3.2 | Modul za kreiranje dokumenata |  | 3d | 2014-05-09 14:00 | 2014-05-12 18:00 | 35 | 0d |  |  |  |  |
| 37 | 2.11.3.3 | Modul za pregled dokumenata |  | 3d | 2014-05-12 18:00 | 2014-05-15 12:00 | 36 | 0d |  |  |  |  |
| 38 | 2.11.3.4 | Modul za ažuriranje |  | 3d | 2014-05-15 12:00 | 2014-05-17 16:00 | 37 | 0d |  |  |  |  |
| 39 | 2.11.3.5 | Modul za slanje maila |  | 2d | 2014-05-17 16:00 | 2014-05-20 12:00 | 38 | 0d |  |  |  |  |
| 40 | 2.11.3.6 | Modul za izvještaje |  | 3d | 2014-05-20 12:00 | 2014-05-22 16:00 | 39 | 0d |  |  |  |  |
| 41 | 2.11.3.7 | Modul za obavijesti |  | 2d | 2014-05-22 16:00 | 2014-05-24 12:00 | 40 | 0d |  |  |  |  |
| 42 | 2.11.3.8 | Modul za pomoć |  | 2d | 2014-05-24 12:00 | 2014-05-26 18:00 | 41 | 0d |  |  |  |  |
| 43 | 2.12 | Završetak programske implementacije | milestone | 0d | 2014-05-26 18:00 | 2014-05-26 18:00 | 34 | 0d |  |  |  |  |
| 44 | 2.13 | Dopuna dokumentacije |  | 12h | 2014-05-26 18:00 | 2014-05-28 10:00 | 43 | 0d |  | Ivan Hontić; Dominik-Dino Pavleković; Laptop 1 | 24h | 610 |
| 45 | 2.14 | Sastanak tima |  | 3h | 2014-05-28 10:00 | 2014-05-28 13:00 | 44 | 0d |  | Andrija Bartolić; Dominik-Dino Pavleković; Dražen Hrgar; Ivan Hontić; Tomislav Hop | 15h | 630 |
| 46 | 3 | KRAJ PROJEKTA | milestone | 0d | 2014-05-28 13:00 | 2014-05-28 13:00 | 2 | 0d |  |  |  |  |
